# Pfizer Continuum Project Plan

Schedule from MS Project, 2012-12-03 to 2013-12-16, A marks actual dates.

## Calendars

- Standard: Mon-Fri 08:00-12:00, 13:00-17:00; Sat-Sun off.

## Resources

| Resource |
| --- |
| Bala |
| Smita |
| Nelli |
| Paula |
| Hugh |
| Steve Matyas |
| Todd |
| Steve L |
| Sohal |
| Harsha |
| Naveen |
| BDA Team |
| Systems Team |
| QA3 |
| QA4 |
| QA5 |
| Vrushali |
| Max |
| VCDE |
| Anu |
| rushali |
| CTEP |
| caXchange |
| C3PR |
| caAERS |
| PSC |
| LV |
| BDA |
| "C3PR |
| Documentation |
| caGrid |
| QA |
| BAM |
| Edmond |
| NCI |
| SAIC-F |
| Web Team |
| Bill Dyer |
| CCTS Team |
| John S |
| Patrick |
| Architects |
| Christo |
| John |
| Rhett |
| Nellie |
| Steve |
| Kalpesh |
| David L |
| Stevel L |
| Kumar C |
| Gia |
| Wendy |
| Raj |
| Steve M |
| Lauren |
| Systems |
| CTRO |
| Hannes |
| SMEs |
| Gisele |
| Joe |
| CTRP Dev team |
| CBIIT |
| All |
| Analysts |
| TBD |
| Charles |
| ESST |
| Developers |
| Lisa |
| Christophe |
| Krishna |
| QA1 |
| QA2 |
| David |
| Security |
| Arch |
| Tech Leads |
| Paula B |
| Kalpana |
| KK |
| Abe |
| Kim |
| Vijay |
| CAT |
| George |
| Larry |
| Michael O |
| Resource 1 |
| Resource 2 |
| Resource3 |
| Resource 4 |
| Resource 5 |
| Gisele S |
| Dianne R |
| HR |
| NA |
| SL |
| ScenPro |
| 5AM |
| TP |
| EM |
| KE |
| JM |
| DL |
| Paul |
| Michael |
| Eilis |
| Team |
| Dev team |
| Ram P |
| NIH 508 team |
| Bryan |
| Bill D |
| Marina |
| Ye |
| Rashmi |
| Ann Wiley |
| Winston |
| QA* |
| Systems* |
| Sree |

## Schedule

| ID | WBS | Task | Type | Duration | Start | Finish | Predecessors | Complete | Remaining | Total slack | Free slack | Constraint | Resources | Work | Actual work |
| --- | --- | --- | --- | --- | --- | --- | --- | --- | --- | --- | --- | --- | --- | --- | --- |
| 1 | 1 | **caArray** |  | 271d | 2012-12-03 A | 2013-12-16 |  | 5% | 256.99d | 0d |  | start no earlier than 2012-12-03 |  | 6208h | 352h |
| 2 | 1.1 | **caArray 2.5.1** |  | 151d | 2012-12-03 A | 2013-07-01 |  | 10% | 136.62d | 56d | 0d |  |  | 3304h | 352h |
| 3 | 1.1.1 | MILESTONE: PROJECT KICKOFF |  | 1d | 2012-12-06 A | 2012-12-06 A |  | 100% |  |  |  | start no earlier than 2012-12-06 |  |  |  |
| 4 | 1.1.2 | User Support - Rembrandt, etc. |  | 3d | 2012-12-03 A | 2012-12-05 A |  | 100% |  |  |  |  | Winston; Rashmi | 48h | 48h |
| 5 | 1.1.3 | Support Apache upgrade of all tiers |  | 5d | 2012-12-06 A | 2012-12-12 A | 4 | 100% |  |  |  |  | Rashmi | 40h | 40h |
| 6 | 1.1.4 | Review TRANSCEND UAT plan |  | 1d | 2012-12-13 A | 2012-12-13 A | 5 | 100% |  |  |  |  | Rashmi | 8h | 8h |
| 7 | 1.1.5 | Vacation and Team Member Unavailability |  | 10d | 2012-12-14 A | 2012-12-27 A | 6 | 100% |  |  |  |  | Winston; Rashmi | 160h | 160h |
| 8 | 1.1.6 | OSDI: Obtain GitHub accounts for all team members |  | 1d | 2012-12-28 A | 2012-12-28 A | 7 | 100% |  |  |  |  | Winston; Rashmi | 16h | 16h |
| 9 | 1.1.7 | OSDI: Do initial analysis, generate author list, fill out checklist |  | 3d | 2012-12-31 A | 2013-01-02 A | 8 | 100% |  |  |  |  | Winston; Rashmi | 48h | 48h |
| 10 | 1.1.8 | Rewrite PMP in EPLC format and update Project Plan |  | 2d | 2013-01-03 A | 2013-01-04 A | 9 | 100% |  |  |  |  | Rashmi | 16h | 16h |
| 11 | 1.1.9 | OSDI: Obtain access to NCIP channel in GitHub (Dependency) |  | 5d | 2012-12-31 | 2013-01-04 | 8 |  |  | 58d | 2d |  | Sree; Larry | 80h |  |
| 12 | 1.1.10 | OSDI: Generate a local git copy |  | 2d | 2013-01-03 A | 2013-01-04 A | 9 | 100% |  |  |  |  | Winston | 16h | 16h |
| 13 | 1.1.11 | OSDI: Split software and tools from docs and test data. |  | 2d | 2013-01-07 | 2013-01-08 | 12 |  |  | 0d |  |  | Winston; Rashmi | 32h |  |
| 14 | 1.1.12 | OSDI: Migrate local git copy to GitHub under NCIP |  | 2d | 2013-01-09 | 2013-01-10 | 11, 13 |  |  | 0d |  |  | Winston | 16h |  |
| 15 | 1.1.13 | OSDI: Change license/copyright text and merge into GitHub repo. |  | 1d | 2013-01-11 | 2013-01-11 | 14 |  |  | 0d |  |  | Winston | 8h |  |
| 16 | 1.1.14 | OSDI: Make build changes. (Remove svn dependencies, pull jboss from the tools directory, etc.) |  | 5d | 2013-01-14 | 2013-01-18 | 15 |  |  | 0d |  |  | Winston | 40h |  |
| 17 | 1.1.15 | OSDI: Work with the Systems team to update and test the Dev AHP build. |  | 5d | 2013-01-21 | 2013-01-25 | 16 |  |  | 0d |  |  | Winston; Systems | 80h |  |
| 18 | 1.1.16 | OSDI: Final test of AHP build on Dev tier |  | 1d | 2013-01-28 | 2013-01-28 | 17 |  |  | 0d |  |  | Winston; Systems; Rashmi | 24h |  |
| 19 | 1.1.17 | OSDI: Update README and other documentation |  | 1d | 2013-01-29 | 2013-01-29 | 18 |  |  | 0d |  |  | Winston; Rashmi | 16h |  |
| 20 | 1.1.18 | OSDI: Work with the Systems team to update and test AHP build on other tiers |  | 16d | 2013-01-30 | 2013-02-20 | 19 |  |  | 91d |  |  | Winston | 128h |  |
| 21 | 1.1.19 | Bug Fixes - performance |  | 20d | 2013-01-30 | 2013-02-26 | 19 |  |  | 0d |  |  | Winston | 160h |  |
| 22 | 1.1.20 | Data Migration to File System |  | 30d | 2013-02-27 | 2013-04-09 | 21 |  |  | 0d |  |  | Winston | 240h |  |
| 23 | 1.1.21 | Section 508 Compliance Improvements |  | 10d | 2013-04-10 | 2013-04-23 | 22 |  |  | 25d | 0d |  | Winston | 80h |  |
| 24 | 1.1.22 | CSM/UPT upgrade |  | 10d | 2013-04-24 | 2013-05-07 | 23 |  |  | 25d |  |  | Winston | 80h |  |
| 25 | 1.1.23 | Automated Regression Testing on QA tier |  | 5d | 2013-04-10 | 2013-04-16 | 22 |  |  | 0d |  |  | QA* | 40h |  |
| 26 | 1.1.24 | Manual Regression Testing on QA tier |  | 4d | 2013-04-17 | 2013-04-22 | 25 |  |  | 0d |  |  | QA* | 32h |  |
| 27 | 1.1.25 | Installer Testing |  | 4d | 2013-04-23 | 2013-04-26 | 26 |  |  | 30d | 0d |  | QA* | 32h |  |
| 28 | 1.1.26 | Section 508 testing on QA tier |  | 2d | 2013-04-29 | 2013-04-30 | 27 |  |  | 30d |  |  | QA* | 16h |  |
| 29 | 1.1.27 | Appscan on QA tier |  | 20d | 2013-04-23 | 2013-05-20 | 26 |  |  | 0d |  |  | Systems* | 160h |  |
| 30 | 1.1.28 | Test Results Review and Reporting |  | 3d | 2013-05-21 | 2013-05-23 | 29 |  |  | 0d |  |  | QA* | 24h |  |
| 31 | 1.1.29 | Deploy to STAGE |  | 1d | 2013-05-24 | 2013-05-24 | 30 |  |  | 0d |  |  | Systems* | 8h |  |
| 32 | 1.1.30 | Appscan on STAGE tier |  | 20d | 2013-05-27 | 2013-06-21 | 31 |  |  | 56d | 0d |  | Systems* | 160h |  |
| 33 | 1.1.31 | Automated Regression Testing on STAGE |  | 4d | 2013-05-27 | 2013-05-30 | 31 |  |  | 14d | 0d |  | QA* | 32h |  |
| 34 | 1.1.32 | API Testing on STAGE |  | 2d | 2013-05-31 | 2013-06-03 | 33 |  |  | 14d |  |  | QA* | 16h |  |
| 35 | 1.1.33 | Test Results Review and Reporting |  | 3d | 2013-06-24 | 2013-06-26 | 33, 34, 32 |  |  | 56d | 0d |  | QA* | 24h |  |
| 36 | 1.1.34 | Create release artifacts |  | 1d | 2013-05-27 | 2013-05-27 | 31 |  |  | 25d |  |  | QA*; Winston; Rashmi | 24h |  |
| 37 | 1.1.35 | Deploy to PRODUCTION |  | 2d | 2013-06-27 | 2013-06-28 | 35 |  |  | 56d | 0d |  | Systems* | 16h |  |
| 38 | 1.1.36 | Update product landing page |  | 1d | 2013-07-01 | 2013-07-01 | 37 |  |  | 56d |  |  | Rashmi | 8h |  |
| 39 | 1.1.37 | QA smoke tests PRODUCTION |  | 1d | 2013-07-01 | 2013-07-01 | 37 |  |  | 56d | 0d |  | QA*; Rashmi | 16h |  |
| 40 | 1.1.38 | MILESTONE: RELEASE 2.5.1 | milestone | 0d | 2013-07-01 | 2013-07-01 | 39 |  |  | 56d |  | start no earlier than 2012-01-09 |  |  |  |
| 41 | 1.1.39 | User Support |  | 85d | 2012-12-03 | 2013-03-29 |  |  |  | 122d |  |  | Winston; Rashmi | 1360h |  |

| ID | WBS | Task | Type | Duration | Start | Finish | Predecessors | Total slack | Free slack | Constraint | Resources | Work |
| --- | --- | --- | --- | --- | --- | --- | --- | --- | --- | --- | --- | --- |
| 42 | 1.2 | **caArray 2.5.2** |  | 146d | 2013-05-27 | 2013-12-16 |  | 0d |  |  |  | 2904h |
| 43 | 1.2.1 | FISMA POAM |  | 20d | 2013-05-27 | 2013-06-21 | 31 | 0d |  |  | Winston; Rashmi | 320h |
| 44 | 1.2.2 | Support Gforge Retirement |  | 5d | 2013-06-24 | 2013-06-28 | 43 | 0d |  |  | Winston; Rashmi | 80h |
| 45 | 1.2.3 | Bug Fixes |  | 20d | 2013-07-01 | 2013-07-26 | 44 | 0d |  |  | Winston | 160h |
| 46 | 1.2.4 | Java 7 upgrade |  | 40d | 2013-07-29 | 2013-09-20 | 45 | 0d |  |  | Winston | 320h |
| 47 | 1.2.5 | Any Improvements Requested |  | 10d | 2013-09-23 | 2013-10-04 | 46 | 0d |  |  | Winston | 80h |
| 48 | 1.2.6 | MILESTONE: EPLC REVIEW (as needed) |  | 2d | 2013-10-07 | 2013-10-08 | 47 | 0d |  | start no earlier than 2012-01-09 | Winston; Rashmi | 32h |
| 49 | 1.2.7 | Automated Regression Testing on QA tier |  | 5d | 2013-10-09 | 2013-10-15 | 48 | 0d |  |  | QA* | 40h |
| 50 | 1.2.8 | Manual Regression Testing on QA tier |  | 4d | 2013-10-16 | 2013-10-21 | 49 | 0d |  |  | QA* | 32h |
| 51 | 1.2.9 | Installer Testing |  | 4d | 2013-10-22 | 2013-10-25 | 50 | 34d | 0d |  | QA* | 32h |
| 52 | 1.2.10 | Section 508 testing on QA tier |  | 2d | 2013-10-28 | 2013-10-29 | 51 | 34d |  |  | QA* | 16h |
| 53 | 1.2.11 | Appscan on QA tier |  | 15d | 2013-10-22 | 2013-11-11 | 50 | 0d |  |  | Systems* | 120h |
| 54 | 1.2.12 | Test Results Review and Reporting |  | 3d | 2013-11-12 | 2013-11-14 | 53 | 0d |  |  | QA* | 24h |
| 55 | 1.2.13 | Deploy to STAGE |  | 1d | 2013-11-15 | 2013-11-15 | 54 | 0d |  |  | Systems* | 8h |
| 56 | 1.2.14 | Appscan on STAGE tier |  | 15d | 2013-11-18 | 2013-12-06 | 55 | 0d |  |  | Systems* | 120h |
| 57 | 1.2.15 | Automated Regression Testing on STAGE |  | 4d | 2013-11-18 | 2013-11-21 | 55 | 9d | 0d |  | QA* | 32h |
| 58 | 1.2.16 | API Testing on STAGE |  | 2d | 2013-11-22 | 2013-11-25 | 57 | 9d |  |  | QA* | 16h |
| 59 | 1.2.17 | Test Results Review and Reporting |  | 3d | 2013-12-09 | 2013-12-11 | 56, 57, 58 | 0d |  |  | QA* | 24h |
| 60 | 1.2.18 | Create release artifacts |  | 1d | 2013-11-18 | 2013-11-18 | 55 | 20d |  |  | Rashmi | 8h |
| 61 | 1.2.19 | Deploy to PRODUCTION |  | 2d | 2013-12-12 | 2013-12-13 | 59 | 0d |  |  | Systems* | 16h |
| 62 | 1.2.20 | Update product landing page |  | 0.5d | 2013-12-16 | 2013-12-16 | 61 | 0.5d |  |  | Rashmi; Systems* | 8h |
| 63 | 1.2.21 | QA smoke tests PRODUCTION |  | 1d | 2013-12-16 | 2013-12-16 | 61 | 0d |  |  | QA* | 8h |
| 64 | 1.2.22 | MILESTONE: RELEASE 2.5.2 | milestone | 0d | 2013-12-16 | 2013-12-16 | 63 | 0d |  | start no earlier than 2012-01-09 |  |  |
| 65 | 1.2.23 | User Support |  | 88d | 2013-07-02 | 2013-10-31 | 2 | 56d |  |  | Winston; Rashmi | 1408h |
| 68 | 1.3 | *QA and Systems are EXTERNAL resources/dependencies | milestone | 0d | 2012-12-03 | 2012-12-03 |  | 225d |  |  |  |  |
